Schedule from MS Project, 2026-06-01 to 2026-11-04, costs in COP, A marks actual dates.
Microsoft

## Calendars

- Cerebrum: Mon-Fri 09:00-13:00, 15:00-19:00; Sat-Sun off. Exceptions (off unless hours are given): 2026-06-08 (Corpus Christi), 2026-06-15 (Sagrado Corazón), 2026-06-29 (San Pedro y San Pablo).
- 24 horas: Mon-Sun 00:00-24:00.

## Resources

| Resource | Rate | Cost per use |
| --- | --- | --- |
| Kevin (indef) | 14083 |  |
| Gabriel (indef) | 14083 |  |
| Iván (Fijo) | 14083 |  |
| Johan Fijo | 14083 |  |
| Servidores (app nube) | 536000 |  |
| Licencias de Software(Libres) |  |  |
| Equipos de cómputo | 6000000 |  |
| Wifi |  |  |
| Servicios publicos |  |  |
| Freelance |  | 4000000 |
| Licencia movil (Anual) | 500000 |  |

## Schedule

| ID | WBS | Task | Type | Duration | Start | Finish | Predecessors | Complete | Remaining | Total slack | Free slack | Constraint | Calendar | Resources | Work | Actual work | Cost | Actual cost |
| --- | --- | --- | --- | --- | --- | --- | --- | --- | --- | --- | --- | --- | --- | --- | --- | --- | --- | --- |
| 1 | 1 | **Cerebrum** |  | 110d | 2026-06-01 A | 2026-11-04 |  | 76% | 26.82d | 0d |  |  |  |  | 3100h | 2266h | 52,440,020 | 39,658,798 |
| 2 | 1.1 | INICIO | milestone | 0d | 2026-06-01 A | 2026-06-01 A |  | 100% |  |  |  |  |  |  |  |  |  |  |
| 3 | 1.2 | **1. Planificación** |  | 10d | 2026-06-01 A | 2026-06-16 |  | 99% | 0d | 100d |  |  |  |  | 320h | 320h | 10,506,560 | 10,506,560 |
| 4 | 1.2.1 | Metas generales del proyecto y alcance inicial |  | 10d | 2026-06-01 A | 2026-06-16 A |  | 100% |  |  |  | start no earlier than 2026-06-01 |  | Gabriel (indef); Iván (Fijo) | 160h | 160h | 2,253,280 | 2,253,280 |
| 5 | 1.2.2 | Cronograma y asignación de tareas o responsabilidades |  | 10d | 2026-06-01 A | 2026-06-16 A |  | 100% |  |  |  | start no earlier than 2026-06-01 |  | Kevin (indef) [20%] | 16h | 16h | 225,328 | 225,328 |
| 6 | 1.2.3 | Identificación de los recursos necesarios comprar equipos/licencias |  | 10d | 2026-06-01 A | 2026-06-16 |  | 99% | 0d | 100d |  | start no earlier than 2026-06-01 |  | Johan Fijo; Kevin (indef) [80%]; Equipos de cómputo; Servicios publicos [0.1%]; Wifi [0.1%] | 144h | 144h | 8,027,952 | 8,027,952 |
| 7 | 1.3 | **2. Análisis** |  | 15d | 2026-06-17 A | 2026-07-08 A |  | 100% |  |  |  |  |  |  | 480h | 480h | 6,759,840 | 6,759,840 |
| 8 | 1.3.1 | problematica de los usuarios o del cliente. |  | 10d | 2026-06-17 A | 2026-07-01 A | 6 | 100% |  |  |  | start no earlier than 2026-05-05 |  | Kevin (indef); Johan Fijo | 160h | 160h | 2,253,280 | 2,253,280 |
| 9 | 1.3.2 | Definición de requisitos funcionales |  | 10d | 2026-06-17 A | 2026-07-01 A | 6 | 100% |  |  |  | start no earlier than 2026-05-05 |  | Gabriel (indef) | 80h | 80h | 1,126,640 | 1,126,640 |
| 10 | 1.3.3 | Definición de requisitos no funcionales |  | 10d | 2026-06-17 A | 2026-07-01 A | 6 | 100% |  |  |  | start no earlier than 2026-05-05 |  | Iván (Fijo) | 80h | 80h | 1,126,640 | 1,126,640 |
| 11 | 1.3.4 | Elaboración de la documentación de requerimientos |  | 5d | 2026-07-02 A | 2026-07-08 A | 8, 9, 10 | 100% |  |  |  | start no earlier than 2026-05-05 |  | Johan Fijo; Gabriel (indef); Iván (Fijo); Kevin (indef) | 160h | 160h | 2,253,280 | 2,253,280 |
| 12 | 1.4 | **3. Diseño** |  | 10d | 2026-07-09 A | 2026-07-22 A |  | 100% |  |  |  |  |  |  | 320h | 320h | 4,506,560 | 4,506,560 |
| 13 | 1.4.1 | Definición de la estructura general del software |  | 5d | 2026-07-09 A | 2026-07-15 A | 11 | 100% |  |  |  | finish no earlier than 2026-06-18 |  | Kevin (indef); Gabriel (indef); Iván (Fijo); Johan Fijo | 160h | 160h | 2,253,280 | 2,253,280 |
| 14 | 1.4.2 | Modelado de bases de datos y diagramas técnicos (UML). |  | 5d | 2026-07-16 A | 2026-07-22 A | 13 | 100% |  |  |  | start no earlier than 2026-05-27 |  | Gabriel (indef); Johan Fijo | 80h | 80h | 1,126,640 | 1,126,640 |
| 15 | 1.4.3 | Diseño de interfaces de usuario (wireframes y prototipos) |  | 5d | 2026-07-16 A | 2026-07-22 A | 13 | 100% |  |  |  | start no earlier than 2026-05-27 |  | Iván (Fijo); Kevin (indef) | 80h | 80h | 1,126,640 | 1,126,640 |
| 16 | 1.5 | **4. Implementación** |  | 32.5d | 2026-07-23 A | 2026-09-07 |  | 86% | 4.64d | 0.25d |  |  |  |  | 860h | 800h | 12,111,380 | 11,266,400 |
| 17 | 1.5.1 | Configuración del entorno de trabajo y control de versiones |  | 5d | 2026-07-23 A | 2026-07-29 A | 14, 15 | 100% |  |  |  | start no earlier than 2026-06-19 |  | Kevin (indef); Gabriel (indef); Iván (Fijo); Johan Fijo | 160h | 160h | 2,253,280 | 2,253,280 |
| 18 | 1.5.2 | Frontend |  | 10d | 2026-07-30 A | 2026-08-12 A | 17 | 100% |  |  |  | start no earlier than 2026-06-19 |  | Kevin (indef) [50%] | 40h | 40h | 563,320 | 563,320 |
| 19 | 1.5.3 | Backend |  | 10d | 2026-07-30 A | 2026-08-12 A | 17 | 100% |  |  |  | start no earlier than 2026-06-19 |  | Johan Fijo; Kevin (indef) [50%] | 120h | 120h | 1,689,960 | 1,689,960 |
| 20 | 1.5.4 | Creacion e integracion de módulos |  | 17.5d | 2026-08-13 A | 2026-09-07 | 18, 19, 21 | 57% | 7.5d | 0.25d | 0d |  |  | Kevin (indef); Gabriel (indef); Iván (Fijo); Johan Fijo | 380h | 320h | 5,351,540 | 4,506,560 |
| 21 | 1.5.5 | Bases de datos |  | 10d | 2026-07-30 A | 2026-08-12 A | 17 | 100% |  |  |  | finish no earlier than 2026-07-02 |  | Iván (Fijo); Gabriel (indef) | 160h | 160h | 2,253,280 | 2,253,280 |
| 22 | 1.6 | **5. Pruebas** |  | 15d | 2026-08-27 A | 2026-09-16 |  | 79% | 3.2d | 0d |  |  |  |  | 560h | 346h | 9,633,200 | 6,619,438 |
| 23 | 1.6.1 | Pruebas unitarias |  | 10d | 2026-08-27 A | 2026-09-09 | 20 | 78% | 2.25d | 0d |  | start no earlier than 2026-06-19 |  | Kevin (indef) | 80h | 62h | 1,126,640 | 873,146 |
| 24 | 1.6.2 | Pruebas de integración |  | 10d | 2026-08-27 A | 2026-09-09 | 20 | 78% | 2.25d | 0d |  | start no earlier than 2026-06-19 |  | Gabriel (indef) | 80h | 62h | 1,126,640 | 873,146 |
| 25 | 1.6.3 | Pruebas de Usabilidad e interfaces responsivas |  | 10d | 2026-08-27 A | 2026-09-09 | 20 | 78% | 2.25d | 0d |  | start no earlier than 2026-06-19 |  | Iván (Fijo) | 80h | 62h | 1,126,640 | 873,146 |
| 26 | 1.6.4 | Empaquetado móvil (android,apple) |  | 20d | 2026-08-27 A | 2026-09-03 A | 20 | 100% |  |  |  | start no earlier than 2026-08-27 | 24 horas | Freelance | 160h | 160h | 4,000,000 | 4,000,000 |
| 27 | 1.6.5 | Detección, reporte y corrección de errores o fallos antes de la entrega |  | 5d | 2026-09-10 | 2026-09-16 | 23, 24, 25, 26 |  |  | 0d |  |  |  | Gabriel (indef); Iván (Fijo); Johan Fijo; Kevin (indef) | 160h |  | 2,253,280 |  |

| ID | WBS | Task | Type | Duration | Start | Finish | Predecessors | Total slack | Constraint | Resources | Work | Cost |
| --- | --- | --- | --- | --- | --- | --- | --- | --- | --- | --- | --- | --- |
| 28 | 1.7 | **6. Despliegue** |  | 35d | 2026-09-17 | 2026-11-04 |  | 0d |  |  | 560h | 8,922,480 |
| 29 | 1.7.1 | Configuración y planes de servidores , host |  | 10d | 2026-09-17 | 2026-09-30 | 27 | 0d | start no earlier than 2026-06-19 | Kevin (indef); Gabriel (indef); Licencia movil (Anual); Servidores (app nube) | 160h | 3,289,280 |
| 30 | 1.7.2 | Lanzamiento oficial de la aplicación para que esté disponible para los usuarios |  | 10d | 2026-10-01 | 2026-10-14 | 29, 26 | 0d | start no earlier than 2026-06-09 | Gabriel (indef); Kevin (indef) | 160h | 2,253,280 |
| 31 | 1.7.3 | Monitoreo inicial posterior al lanzamiento y soporte básico |  | 15d | 2026-10-15 | 2026-11-04 | 30 | 0d | start no earlier than 2026-06-19 | Gabriel (indef); Kevin (indef) | 240h | 3,379,920 |
| 32 | 1.8 | Fin | milestone | 0d | 2026-11-04 | 2026-11-04 | 31 | 0d | start no earlier than 2026-07-06 |  |  |  |
